# House Build

How a schedule from ProjectLibre changed from version to version. A marks actual dates.

## Version 1 (saved 2024-01-28)

Note of the change: Add new quote from EcoTech Homes and past quotes from them.

| ID | WBS | Task | Duration | Start | Finish | Predecessors | Constraint |
| --- | --- | --- | --- | --- | --- | --- | --- |
| 1 |  | Contribution charge commencement deadline | 0d | 2024-04-01 | 2024-04-01 |  | must finish on 2024-04-01 |
| 2 |  | Stamp duty commencement deadline | 0d? | 2024-12-31 | 2024-12-31 |  | must finish on 2024-12-31 |
| 3 | 3 | **Prepare site for foundations install** | 111d | 2024-02-05 | 2024-07-08 |  | start no earlier than 2024-02-05 |
| 4 |  | Structural engineering and general arrangement drawings | 15d | 2024-02-05 | 2024-02-23 |  |  |
| 5 |  | Offsite manufacture of timber frames | 25d | 2024-06-01 | 2024-07-05 | 4 | start no earlier than 2024-06-01 |
| 6 |  | Install pipes popping up into house with +/- 5mm tolerance | 2d | 2024-02-26 | 2024-02-27 | 4 |  |
| 7 |  | Hardcore site for heavy vehicles | 1d | 2024-02-28 | 2024-02-28 | 6 |  |
| 8 |  | Scaffolding erected around house + loading bays (ticketed) | 2d | 2024-02-29 | 2024-03-01 | 7 |  |
| 9 |  | Self build insurance | 1d | 2024-07-08 | 2024-07-08 | 5 |  |
| 10 |  | Foundations install | 5d | 2024-07-09 | 2024-07-15 | 3 |  |
| 11 |  | Timber frame install | 5d | 2024-07-16 | 2024-07-22 | 10 |  |
| 12 | 6 | **Exterior** | 75d | 2024-07-23 | 2024-11-04 | 11 |  |
| 13 |  | Wall glazing | 40d | 2024-07-23 | 2024-09-16 |  |  |
| 14 |  | Insulated thermal window brackets | 3d | 2024-09-17 | 2024-09-19 | 13 |  |
| 15 |  | Insulated window sills | 5d | 2024-09-17 | 2024-09-23 | 13 |  |
| 16 |  | Flat roof install | 2d | 2024-07-23 | 2024-07-24 |  |  |
| 17 |  | Roof slates + solar PV rails install | 5d | 2024-07-23 | 2024-07-29 |  |  |
| 18 |  | External cavity wiring | 2d | 2024-07-23 | 2024-07-24 |  |  |
| 19 |  | Entrance door | 1d | 2024-07-23 | 2024-07-23 |  |  |
| 20 |  | First air tightness blower test | 2d | 2024-09-24 | 2024-09-25 | 13, 14, 15, 17, 18, 19 |  |
| 21 | 6.9 | **Exterior leaf** | 15d | 2024-09-26 | 2024-10-16 | 20 |  |
| 22 |  | Blocks to west, south, east, some of north | 7d | 2024-09-26 | 2024-10-04 |  |  |
| 23 |  | Charred larch leaf to north | 3d | 2024-09-26 | 2024-09-30 |  |  |
| 24 |  | Fascia and soffit | 5d | 2024-09-26 | 2024-10-02 |  |  |
| 25 |  | External leaf render | 10d | 2024-10-03 | 2024-10-16 | 24 |  |
| 26 | 6.10 | **After remove scaffolding** | 13d | 2024-10-17 | 2024-11-04 | 21 |  |
| 27 | 6.10.1 | **Exterior services** | 5d | 2024-10-17 | 2024-10-23 |  |  |
| 28 |  | Soakaways and SUDS boxes | 2d | 2024-10-17 | 2024-10-18 |  |  |
| 29 |  | Exterior foulwater and stormwater | 5d | 2024-10-17 | 2024-10-23 |  |  |
| 30 |  | Bury 150m of brine loop pipe for ventilation | 2d | 2024-10-17 | 2024-10-18 |  |  |
| 31 |  | Suspended rainwater harvesting tanks | 1d | 2024-10-17 | 2024-10-17 |  |  |
| 32 |  | Footpaths and patio | 5d | 2024-10-24 | 2024-10-30 | 27 |  |
| 33 |  | Driveway | 3d | 2024-10-31 | 2024-11-04 | 32 |  |
| 34 |  | Construct rear earthern mound | 2d | 2024-10-21 | 2024-10-22 | 30 |  |
| 35 |  | Complete walled garden after filling with topsoil | 2d | 2024-10-31 | 2024-11-01 | 30, 32 |  |
| 36 |  | Level ground ready for grass seeding | 1d | 2024-11-04 | 2024-11-04 | 32, 34, 35 |  |
| 37 | 10 | **Interior** | 110d | 2024-07-23 | 2024-12-23 | 11 |  |
| 38 | 10.1 | **First fix** | 74d | 2024-07-23 | 2024-11-01 |  |  |
| 39 |  | Stairs | 2d | 2024-07-23 | 2024-07-24 |  |  |
| 40 |  | First fix internal AC wiring | 10d | 2024-09-17 | 2024-09-30 | 13, 18, 19 |  |
| 41 | 10.1.3 | **First fix internal DC wiring** | 30d | 2024-09-17 | 2024-10-28 | 13 |  |
| 42 |  | 24v DC wiring | 10d | 2024-09-17 | 2024-09-30 |  |  |
| 43 |  | 9v DC wiring | 10d | 2024-10-01 | 2024-10-14 | 42 |  |
| 44 |  | 54v DC wiring + ethernet | 10d | 2024-10-15 | 2024-10-28 | 43 |  |
| 45 | 10.1.4 | **First fix internal plumbing** | 10d | 2024-09-17 | 2024-09-30 | 13 |  |
| 46 |  | Water softener | 1d | 2024-09-17 | 2024-09-17 |  |  |
| 47 |  | Reverse osmosis unit | 1d | 2024-09-17 | 2024-09-17 |  |  |
| 48 |  | Underfloor heating | 3d | 2024-09-17 | 2024-09-19 |  |  |
| 49 |  | Thermal store | 10d | 2024-09-17 | 2024-09-30 |  |  |
| 50 |  | Ventilation system | 10d | 2024-10-21 | 2024-11-01 | 30, 40, 42, 49 |  |
| 51 |  | Fire mist suppression system | 1d | 2024-10-01 | 2024-10-01 | 45 |  |
| 52 |  | Paint steel its final colour | 5d | 2024-07-23 | 2024-07-29 |  |  |
| 53 |  | Second air tightness blower test | 1d | 2024-11-04 | 2024-11-04 | 38 |  |
| 54 |  | Install plasterboard and skim | 10d | 2024-11-05 | 2024-11-18 | 53 |  |
| 55 |  | Paint everything white | 10d | 2024-11-19 | 2024-12-02 | 54 |  |
| 56 | 10.5 | **Second fix** | 15d | 2024-12-03 | 2024-12-23 | 55 |  |
| 57 |  | Affix all sockets and switches and lights | 5d | 2024-12-03 | 2024-12-09 |  |  |
| 58 |  | Install showers, baths and tiling for them | 10d | 2024-12-03 | 2024-12-16 |  |  |
| 59 |  | Install sanitaryware | 5d | 2024-12-03 | 2024-12-09 |  |  |
| 60 |  | Kitchen | 5d | 2024-12-03 | 2024-12-09 |  |  |
| 61 |  | Flooring | 15d | 2024-12-03 | 2024-12-23 |  |  |
| 62 |  | Wardrobes, book cases, shelving | 15d | 2024-12-03 | 2024-12-23 |  |  |
| 63 |  | Glass ballustrading for bridge and stairs | 3d | 2024-12-03 | 2024-12-05 |  |  |

## Version 2 (saved 2024-04-22)

Note of the change: Add notes on tree heights, sauna insulation, sauna radiators, outhouse buildups and refresh latest editions of other files such as project plan

Last finish 2024-12-31 → 2025-10-01 (+274d). Complete tasks 0 → 3.

Added:

| ID | Task | Duration | Start | Finish | Predecessors | Constraint |
| --- | --- | --- | --- | --- | --- | --- |
| 3 | Self build insurance ends | 0d | 2025-10-01 | 2025-10-01 |  | must finish on 2025-10-01 |
| 5 | Level and compact 200mm of T2 stone as subfoundation | 5d | 2024-04-01 | 2024-04-05 | 14 |  |
| 6 | General arrangement drawings | 15d | 2024-04-22 | 2024-05-10 |  | start no earlier than 2024-04-22 |
| 7 | Structural engineering drawings | 15d | 2024-05-13 | 2024-05-31 | 6 |  |
| 9 | Surveyor to mark out service popups | 20d | 2024-06-03 | 2024-06-28 | 7 |  |
| 13 | Surveyor to return to check service popups again | 20d | 2024-07-03 | 2024-07-30 | 10 |  |

Removed: 4 Structural engineering and general arrangement drawings

Changed:

| ID | Task | Start | Finish | Duration | Complete | Predecessors | Other |
| --- | --- | --- | --- | --- | --- | --- | --- |
| 1 | Contribution charge commencement deadline | 2024-04-01 → 2024-01-26 (-66d) | 2024-04-01 → 2024-01-26 (-66d) |  |  |  | constraint must finish on 2024-04-01 → finish no later than 2024-04-24 |
| 2 | Stamp duty commencement deadline |  |  | 0d? → 0d |  |  |  |
| 4 | **Prepare site for foundations install** | 2024-02-05 → 2024-04-01 (+56d) | 2024-07-08 → 2024-07-30 (+22d) | 111d → 87d | 0% → 9% |  | constraint start no earlier than 2024-02-05 → start no earlier than 2024-04-01 |
| 8 | Offsite manufacture of timber frames | 2024-06-01 → 2024-06-03 (+2d) |  |  |  | Structural engineering and general arrangement drawings → 7 |  |
| 10 | Install pipes popping up into house with +/- 5mm tolerance | 2024-02-26 → 2024-07-01 (+126d) | 2024-02-27 → 2024-07-02 (+126d) |  |  | Structural engineering and general arrangement drawings → 5, 6, 9, 11 |  |
| 11 | Hardcore site for heavy vehicles | 2024-02-28 → 2024-04-01 (+33d) | 2024-02-28 → 2024-04-05 (+37d) | 1d → 5d | 0% → 100% | 10 → none |  |
| 12 | Scaffolding erected around house + loading bays (ticketed) | 2024-02-29 → 2024-05-13 (+74d) | 2024-03-01 → 2024-05-14 (+74d) |  |  | 11 → 6, 14 |  |
| 14 | Self build insurance | 2024-07-08 → 2024-04-01 (-98d) | 2024-07-08 → 2024-04-01 (-98d) | 1d → 0d | 0% → 100% | 8 → none |  |
| 15 | Foundations install | 2024-07-09 → 2024-07-31 (+22d) | 2024-07-15 → 2024-08-06 (+22d) |  |  |  |  |
| 16 | Timber frame install | 2024-07-16 → 2024-08-07 (+22d) | 2024-07-22 → 2024-08-13 (+22d) |  |  |  |  |
| 17 | **Exterior** | 2024-07-23 → 2024-08-14 (+22d) | 2024-11-04 → 2024-11-26 (+22d) |  |  |  |  |
| 18 | Wall glazing | 2024-07-23 → 2024-08-14 (+22d) | 2024-09-16 → 2024-10-08 (+22d) |  |  |  |  |
| 19 | Insulated thermal window brackets | 2024-09-17 → 2024-10-09 (+22d) | 2024-09-19 → 2024-10-11 (+22d) |  |  |  |  |
| 20 | Insulated window sills | 2024-09-17 → 2024-10-09 (+22d) | 2024-09-23 → 2024-10-15 (+22d) |  |  |  |  |
| 21 | Flat roof install | 2024-07-23 → 2024-08-14 (+22d) | 2024-07-24 → 2024-08-15 (+22d) |  |  |  |  |
| 22 | Roof slates + solar PV rails install | 2024-07-23 → 2024-08-14 (+22d) | 2024-07-29 → 2024-08-20 (+22d) |  |  |  |  |
| 23 | External cavity wiring | 2024-07-23 → 2024-08-14 (+22d) | 2024-07-24 → 2024-08-15 (+22d) |  |  |  |  |
| 24 | Entrance door | 2024-07-23 → 2024-08-14 (+22d) | 2024-07-23 → 2024-08-14 (+22d) |  |  |  |  |
| 25 | First air tightness blower test | 2024-09-24 → 2024-10-16 (+22d) | 2024-09-25 → 2024-10-17 (+22d) |  |  |  |  |
| 26 | **Exterior leaf** | 2024-09-26 → 2024-10-18 (+22d) | 2024-10-16 → 2024-11-07 (+22d) |  |  |  |  |
| 27 | Blocks to west, south, east, some of north | 2024-09-26 → 2024-10-18 (+22d) | 2024-10-04 → 2024-10-28 (+24d) |  |  |  |  |
| 28 | Charred larch leaf to north | 2024-09-26 → 2024-10-18 (+22d) | 2024-09-30 → 2024-10-22 (+22d) |  |  |  |  |
| 29 | Fascia and soffit | 2024-09-26 → 2024-10-18 (+22d) | 2024-10-02 → 2024-10-24 (+22d) |  |  |  |  |
| 30 | External leaf render | 2024-10-03 → 2024-10-25 (+22d) | 2024-10-16 → 2024-11-07 (+22d) |  |  |  |  |
| 31 | **After remove scaffolding** | 2024-10-17 → 2024-11-08 (+22d) | 2024-11-04 → 2024-11-26 (+22d) |  |  |  |  |
| 32 | **Exterior services** | 2024-10-17 → 2024-11-08 (+22d) | 2024-10-23 → 2024-11-14 (+22d) |  |  |  |  |
| 33 | Soakaways and SUDS boxes | 2024-10-17 → 2024-11-08 (+22d) | 2024-10-18 → 2024-11-11 (+24d) |  |  |  |  |
| 34 | Exterior foulwater and stormwater | 2024-10-17 → 2024-11-08 (+22d) | 2024-10-23 → 2024-11-14 (+22d) |  |  |  |  |
| 35 | Bury 150m of brine loop pipe for ventilation | 2024-10-17 → 2024-11-08 (+22d) | 2024-10-18 → 2024-11-11 (+24d) |  |  |  |  |
| 36 | Suspended rainwater harvesting tanks | 2024-10-17 → 2024-11-08 (+22d) | 2024-10-17 → 2024-11-08 (+22d) |  |  |  |  |
| 37 | Footpaths and patio | 2024-10-24 → 2024-11-15 (+22d) | 2024-10-30 → 2024-11-21 (+22d) |  |  |  |  |
| 38 | Driveway | 2024-10-31 → 2024-11-22 (+22d) | 2024-11-04 → 2024-11-26 (+22d) |  |  |  |  |
| 39 | Construct rear earthern mound | 2024-10-21 → 2024-11-12 (+22d) | 2024-10-22 → 2024-11-13 (+22d) |  |  |  |  |
| 40 | Complete walled garden after filling with topsoil | 2024-10-31 → 2024-11-22 (+22d) | 2024-11-01 → 2024-11-25 (+24d) |  |  |  |  |
| 41 | Level ground ready for grass seeding | 2024-11-04 → 2024-11-26 (+22d) | 2024-11-04 → 2024-11-26 (+22d) |  |  |  |  |
| 42 | **Interior** | 2024-07-23 → 2024-08-14 (+22d) | 2024-12-23 → 2025-01-14 (+22d) |  |  |  |  |
| 43 | **First fix** | 2024-07-23 → 2024-08-14 (+22d) | 2024-11-01 → 2024-11-25 (+24d) |  |  |  |  |
| 44 | Stairs | 2024-07-23 → 2024-08-14 (+22d) | 2024-07-24 → 2024-08-15 (+22d) |  |  |  |  |
| 45 | First fix internal AC wiring | 2024-09-17 → 2024-10-09 (+22d) | 2024-09-30 → 2024-10-22 (+22d) |  |  |  |  |
| 46 | **First fix internal DC wiring** | 2024-09-17 → 2024-10-09 (+22d) | 2024-10-28 → 2024-11-19 (+22d) |  |  |  |  |
| 47 | 24v DC wiring | 2024-09-17 → 2024-10-09 (+22d) | 2024-09-30 → 2024-10-22 (+22d) |  |  |  |  |
| 48 | 9v DC wiring | 2024-10-01 → 2024-10-23 (+22d) | 2024-10-14 → 2024-11-05 (+22d) |  |  |  |  |
| 49 | 54v DC wiring + ethernet | 2024-10-15 → 2024-11-06 (+22d) | 2024-10-28 → 2024-11-19 (+22d) |  |  |  |  |
| 50 | **First fix internal plumbing** | 2024-09-17 → 2024-10-09 (+22d) | 2024-09-30 → 2024-10-22 (+22d) |  |  |  |  |
| 51 | Water softener | 2024-09-17 → 2024-10-09 (+22d) | 2024-09-17 → 2024-10-09 (+22d) |  |  |  |  |
| 52 | Reverse osmosis unit | 2024-09-17 → 2024-10-09 (+22d) | 2024-09-17 → 2024-10-09 (+22d) |  |  |  |  |
| 53 | Underfloor heating | 2024-09-17 → 2024-10-09 (+22d) | 2024-09-19 → 2024-10-11 (+22d) |  |  |  |  |
| 54 | Thermal store | 2024-09-17 → 2024-10-09 (+22d) | 2024-09-30 → 2024-10-22 (+22d) |  |  |  |  |
| 55 | Ventilation system | 2024-10-21 → 2024-11-12 (+22d) | 2024-11-01 → 2024-11-25 (+24d) |  |  |  |  |
| 56 | Fire mist suppression system | 2024-10-01 → 2024-10-23 (+22d) | 2024-10-01 → 2024-10-23 (+22d) |  |  |  |  |
| 57 | Paint steel its final colour | 2024-07-23 → 2024-08-14 (+22d) | 2024-07-29 → 2024-08-20 (+22d) |  |  |  |  |
| 58 | Second air tightness blower test | 2024-11-04 → 2024-11-26 (+22d) | 2024-11-04 → 2024-11-26 (+22d) |  |  |  |  |
| 59 | Install plasterboard and skim | 2024-11-05 → 2024-11-27 (+22d) | 2024-11-18 → 2024-12-10 (+22d) |  |  |  |  |
| 60 | Paint everything white | 2024-11-19 → 2024-12-11 (+22d) | 2024-12-02 → 2024-12-24 (+22d) |  |  |  |  |
| 61 | **Second fix** | 2024-12-03 → 2024-12-25 (+22d) | 2024-12-23 → 2025-01-14 (+22d) |  |  |  |  |
| 62 | Affix all sockets and switches and lights | 2024-12-03 → 2024-12-25 (+22d) | 2024-12-09 → 2024-12-31 (+22d) |  |  |  |  |
| 63 | Install showers, baths and tiling for them | 2024-12-03 → 2024-12-25 (+22d) | 2024-12-16 → 2025-01-07 (+22d) |  |  |  |  |
| 64 | Install sanitaryware | 2024-12-03 → 2024-12-25 (+22d) | 2024-12-09 → 2024-12-31 (+22d) |  |  |  |  |
| 65 | Kitchen | 2024-12-03 → 2024-12-25 (+22d) | 2024-12-09 → 2024-12-31 (+22d) |  |  |  |  |
| 66 | Flooring | 2024-12-03 → 2024-12-25 (+22d) | 2024-12-23 → 2025-01-14 (+22d) |  |  |  |  |
| 67 | Wardrobes, book cases, shelving | 2024-12-03 → 2024-12-25 (+22d) | 2024-12-23 → 2025-01-14 (+22d) |  |  |  |  |
| 68 | Glass ballustrading for bridge and stairs | 2024-12-03 → 2024-12-25 (+22d) | 2024-12-05 → 2024-12-27 (+22d) |  |  |  |  |

## Version 3 (saved 2024-09-29)

Note of the change: Add six months worth of designs, quotes and tech docs

Last finish 2025-10-01 → 2025-12-31 (+91d).

Added:

| ID | Task | Duration | Start | Finish | Predecessors |
| --- | --- | --- | --- | --- | --- |
| 16 | Roof glazing | 30d | 2024-08-05 | 2024-09-13 | 7 |

Changed:

| ID | Task | Start | Finish | Duration | Predecessors | Other |
| --- | --- | --- | --- | --- | --- | --- |
| 1 | Contribution charge completion deadline | 2024-01-26 → 2025-12-31 (+705d) | 2024-01-26 → 2025-12-31 (+705d) |  |  | was named Contribution charge commencement deadline; constraint finish no later than 2024-04-24 → start no earlier than 2025-12-31 |
| 4 | **Prepare site for foundations install** |  | 2024-07-30 → 2024-10-01 (+63d) | 87d → 132d |  |  |
| 6 | General arrangement drawings | 2024-04-22 → 2024-06-24 (+63d) | 2024-05-10 → 2024-07-12 (+63d) |  |  | constraint start no earlier than 2024-04-22 → start no earlier than 2024-06-24 |
| 7 | Structural engineering drawings | 2024-05-13 → 2024-07-15 (+63d) | 2024-05-31 → 2024-08-02 (+63d) |  |  |  |
| 8 | Offsite manufacture of timber frames | 2024-06-03 → 2024-08-05 (+63d) | 2024-07-05 → 2024-09-06 (+63d) |  |  |  |
| 9 | Surveyor to mark out service popups | 2024-06-03 → 2024-08-05 (+63d) | 2024-06-28 → 2024-08-30 (+63d) |  |  |  |
| 10 | Install pipes popping up into house with +/- 5mm tolerance | 2024-07-01 → 2024-09-02 (+63d) | 2024-07-02 → 2024-09-03 (+63d) |  |  |  |
| 12 | Scaffolding erected around house + loading bays (ticketed) | 2024-05-13 → 2024-07-15 (+63d) | 2024-05-14 → 2024-07-16 (+63d) |  |  |  |
| 13 | Surveyor to return to check service popups again | 2024-07-03 → 2024-09-04 (+63d) | 2024-07-30 → 2024-10-01 (+63d) |  |  |  |
| 15 | Foundations install | 2024-07-31 → 2024-10-02 (+63d) | 2024-08-06 → 2024-10-08 (+63d) |  |  |  |
| 17 | Timber frame install | 2024-08-07 → 2024-10-09 (+63d) | 2024-08-13 → 2024-10-15 (+63d) |  | 15 → 15, 16 |  |
| 18 | **Exterior** | 2024-08-14 → 2024-10-16 (+63d) | 2024-11-26 → 2025-01-28 (+63d) |  |  |  |
| 19 | Wall glazing | 2024-08-14 → 2024-10-16 (+63d) | 2024-10-08 → 2024-12-10 (+63d) |  |  |  |
| 20 | Insulated thermal window brackets | 2024-10-09 → 2024-12-11 (+63d) | 2024-10-11 → 2024-12-13 (+63d) |  |  |  |
| 21 | Insulated window sills | 2024-10-09 → 2024-12-11 (+63d) | 2024-10-15 → 2024-12-17 (+63d) |  |  |  |
| 22 | Flat roof install | 2024-08-14 → 2024-10-16 (+63d) | 2024-08-15 → 2024-10-17 (+63d) |  |  |  |
| 23 | Roof slates + solar PV rails install | 2024-08-14 → 2024-10-16 (+63d) | 2024-08-20 → 2024-10-22 (+63d) |  |  |  |
| 24 | External cavity wiring | 2024-08-14 → 2024-10-16 (+63d) | 2024-08-15 → 2024-10-17 (+63d) |  |  |  |
| 25 | Entrance door | 2024-08-14 → 2024-10-16 (+63d) | 2024-08-14 → 2024-10-16 (+63d) |  |  |  |
| 26 | First air tightness blower test | 2024-10-16 → 2024-12-18 (+63d) | 2024-10-17 → 2024-12-19 (+63d) |  |  |  |
| 27 | **Exterior leaf** | 2024-10-18 → 2024-12-20 (+63d) | 2024-11-07 → 2025-01-09 (+63d) |  |  |  |
| 28 | Blocks to west, south, east, some of north | 2024-10-18 → 2024-12-20 (+63d) | 2024-10-28 → 2024-12-30 (+63d) |  |  |  |
| 29 | Charred larch leaf to north | 2024-10-18 → 2024-12-20 (+63d) | 2024-10-22 → 2024-12-24 (+63d) |  |  |  |
| 30 | Fascia and soffit | 2024-10-18 → 2024-12-20 (+63d) | 2024-10-24 → 2024-12-26 (+63d) |  |  |  |
| 31 | External leaf render | 2024-10-25 → 2024-12-27 (+63d) | 2024-11-07 → 2025-01-09 (+63d) |  |  |  |
| 32 | **After remove scaffolding** | 2024-11-08 → 2025-01-10 (+63d) | 2024-11-26 → 2025-01-28 (+63d) |  |  |  |
| 33 | **Exterior services** | 2024-11-08 → 2025-01-10 (+63d) | 2024-11-14 → 2025-01-16 (+63d) |  |  |  |
| 34 | Soakaways and SUDS boxes | 2024-11-08 → 2025-01-10 (+63d) | 2024-11-11 → 2025-01-13 (+63d) |  |  |  |
| 35 | Exterior foulwater and stormwater | 2024-11-08 → 2025-01-10 (+63d) | 2024-11-14 → 2025-01-16 (+63d) |  |  |  |
| 36 | Bury 150m of brine loop pipe for ventilation | 2024-11-08 → 2025-01-10 (+63d) | 2024-11-11 → 2025-01-13 (+63d) |  |  |  |
| 37 | Suspended rainwater harvesting tanks | 2024-11-08 → 2025-01-10 (+63d) | 2024-11-08 → 2025-01-10 (+63d) |  |  |  |
| 38 | Footpaths and patio | 2024-11-15 → 2025-01-17 (+63d) | 2024-11-21 → 2025-01-23 (+63d) |  |  |  |
| 39 | Driveway | 2024-11-22 → 2025-01-24 (+63d) | 2024-11-26 → 2025-01-28 (+63d) |  |  |  |
| 40 | Construct rear earthern mound | 2024-11-12 → 2025-01-14 (+63d) | 2024-11-13 → 2025-01-15 (+63d) |  |  |  |
| 41 | Complete walled garden after filling with topsoil | 2024-11-22 → 2025-01-24 (+63d) | 2024-11-25 → 2025-01-27 (+63d) |  |  |  |
| 42 | Level ground ready for grass seeding | 2024-11-26 → 2025-01-28 (+63d) | 2024-11-26 → 2025-01-28 (+63d) |  |  |  |
| 43 | **Interior** | 2024-08-14 → 2024-10-16 (+63d) | 2025-01-14 → 2025-03-18 (+63d) |  |  |  |
| 44 | **First fix** | 2024-08-14 → 2024-10-16 (+63d) | 2024-11-25 → 2025-01-27 (+63d) |  |  |  |
| 45 | Stairs | 2024-08-14 → 2024-10-16 (+63d) | 2024-08-15 → 2024-10-17 (+63d) |  |  |  |
| 46 | First fix internal AC wiring | 2024-10-09 → 2024-12-11 (+63d) | 2024-10-22 → 2024-12-24 (+63d) |  |  |  |
| 47 | **First fix internal DC wiring** | 2024-10-09 → 2024-12-11 (+63d) | 2024-11-19 → 2025-01-21 (+63d) |  |  |  |
| 48 | 24v DC wiring | 2024-10-09 → 2024-12-11 (+63d) | 2024-10-22 → 2024-12-24 (+63d) |  |  |  |
| 49 | 9v DC wiring | 2024-10-23 → 2024-12-25 (+63d) | 2024-11-05 → 2025-01-07 (+63d) |  |  |  |
| 50 | 54v DC wiring + ethernet | 2024-11-06 → 2025-01-08 (+63d) | 2024-11-19 → 2025-01-21 (+63d) |  |  |  |
| 51 | **First fix internal plumbing** | 2024-10-09 → 2024-12-11 (+63d) | 2024-10-22 → 2024-12-24 (+63d) |  |  |  |
| 52 | Water softener | 2024-10-09 → 2024-12-11 (+63d) | 2024-10-09 → 2024-12-11 (+63d) |  |  |  |
| 53 | Reverse osmosis unit | 2024-10-09 → 2024-12-11 (+63d) | 2024-10-09 → 2024-12-11 (+63d) |  |  |  |
| 54 | Underfloor heating | 2024-10-09 → 2024-12-11 (+63d) | 2024-10-11 → 2024-12-13 (+63d) |  |  |  |
| 55 | Thermal store | 2024-10-09 → 2024-12-11 (+63d) | 2024-10-22 → 2024-12-24 (+63d) |  |  |  |
| 56 | Ventilation system | 2024-11-12 → 2025-01-14 (+63d) | 2024-11-25 → 2025-01-27 (+63d) |  |  |  |
| 57 | Fire mist suppression system | 2024-10-23 → 2024-12-25 (+63d) | 2024-10-23 → 2024-12-25 (+63d) |  |  |  |
| 58 | Paint steel its final colour | 2024-08-14 → 2024-10-16 (+63d) | 2024-08-20 → 2024-10-22 (+63d) |  |  |  |
| 59 | Second air tightness blower test | 2024-11-26 → 2025-01-28 (+63d) | 2024-11-26 → 2025-01-28 (+63d) |  |  |  |
| 60 | Install plasterboard and skim | 2024-11-27 → 2025-01-29 (+63d) | 2024-12-10 → 2025-02-11 (+63d) |  |  |  |
| 61 | Paint everything white | 2024-12-11 → 2025-02-12 (+63d) | 2024-12-24 → 2025-02-25 (+63d) |  |  |  |
| 62 | **Second fix** | 2024-12-25 → 2025-02-26 (+63d) | 2025-01-14 → 2025-03-18 (+63d) |  |  |  |
| 63 | Affix all sockets and switches and lights | 2024-12-25 → 2025-02-26 (+63d) | 2024-12-31 → 2025-03-04 (+63d) |  |  |  |
| 64 | Install showers, baths and tiling for them | 2024-12-25 → 2025-02-26 (+63d) | 2025-01-07 → 2025-03-11 (+63d) |  |  |  |
| 65 | Install sanitaryware | 2024-12-25 → 2025-02-26 (+63d) | 2024-12-31 → 2025-03-04 (+63d) |  |  |  |
| 66 | Kitchen | 2024-12-25 → 2025-02-26 (+63d) | 2024-12-31 → 2025-03-04 (+63d) |  |  |  |
| 67 | Flooring | 2024-12-25 → 2025-02-26 (+63d) | 2025-01-14 → 2025-03-18 (+63d) |  |  |  |
| 68 | Wardrobes, book cases, shelving | 2024-12-25 → 2025-02-26 (+63d) | 2025-01-14 → 2025-03-18 (+63d) |  |  |  |
| 69 | Glass ballustrading for bridge and stairs | 2024-12-25 → 2025-02-26 (+63d) | 2024-12-27 → 2025-02-28 (+63d) |  |  |  |
